# Создание официального Web-сайта ООО «Востокбанк»

Schedule from MS Project, 2017-08-28 to 2017-12-30, costs in ₽.

## Calendars

- Стандартный: Mon-Fri 09:00-13:00, 14:00-18:00; Sat-Sun off. Exceptions (off unless hours are given): 2017-12-30 09:00-13:00, 14:00-18:00.

## Resources

| Resource | Rate |
| --- | --- |
| Руководитель |  |
| Менеджер | 100 |
| Аналитик | 160 |
| Дизайнер 1 | 120 |
| Дизайнер 2 | 120 |
| Верстальщик | 115 |
| Программист 1 | 150 |
| Программист 2 | 150 |
| Программист 3 | 150 |
| Системный администратор | 170 |

## Schedule

| ID | WBS | Task | Type | Duration | Start | Finish | Predecessors | Total slack | Constraint | Deadline | Resources | Work | Cost |
| --- | --- | --- | --- | --- | --- | --- | --- | --- | --- | --- | --- | --- | --- |
| 1 | 1 | **Анализ требований** |  | 15d | 2017-08-28 | 2017-09-15 |  | 0d |  |  |  | 75.2h | 6,992 |
| 2 | 1.1 | Анализ предметной области, интервьюирование клиента |  | 7d | 2017-08-28 | 2017-09-05 |  | 0d |  |  |  |  |  |
| 3 | 1.2 | Анализ конкуренции |  | 3d | 2017-09-01 | 2017-09-05 | 2FF | 0d |  |  | Руководитель [25%]; Аналитик [20%] | 10.8h | 768 |
| 4 | 1.3 | Анализ целевой аудитории |  | 3d | 2017-09-01 | 2017-09-05 | 2FF | 0d |  |  | Менеджер [25%]; Аналитик [20%] | 10.8h | 1,368 |
| 5 | 1.4 | Разработка и утверждение концепта сайта |  | 2d | 2017-09-06 | 2017-09-07 | 2, 3, 4 | 0d |  |  | Менеджер [25%]; Аналитик [20%] | 7.2h | 912 |
| 6 | 1.5 | Планирование проекта |  | 2d | 2017-09-08 | 2017-09-11 | 5 | 0d |  |  | Аналитик [20%]; Дизайнер 1 | 19.2h | 2,432 |
| 7 | 1.6 | Составление ТЗ |  | 5d | 2017-09-08 | 2017-09-14 | 6SS | 0d |  |  | Руководитель [25%]; Менеджер [25%] | 20h | 1,000 |
| 8 | 1.7 | Утверждение ТЗ |  | 2d | 2017-09-14 | 2017-09-15 | 7FS-1d | 0d |  |  | Руководитель [25%]; Аналитик [20%] | 7.2h | 512 |
| 9 | 1.8 | Завершение анализа требований | milestone | 0d | 2017-09-15 | 2017-09-15 | 8 | 0d |  |  | Руководитель [25%]; Менеджер [25%] |  |  |
| 10 | 2 | **Разработка дизайна сайта** |  | 21d | 2017-09-18 | 2017-10-16 |  | 0d |  |  |  | 56h | 6,720 |
| 11 | 2.1 | Разработка дизайна по выбранному концепту |  | 7d | 2017-09-18 | 2017-09-26 | 9 | 0d |  |  |  |  |  |
| 12 | 2.2 | Ревизия главной страницы сайта |  | 3d | 2017-09-27 | 2017-09-29 | 11 | 0d | start no earlier than 2017-09-18 |  | Дизайнер 1 [25%]; Дизайнер 2 [25%] | 12h | 1,440 |
| 13 | 2.3 | Разработка и ревизия дизайна второстепенных страниц |  | 5d | 2017-10-02 | 2017-10-06 | 12 | 0d | start no earlier than 2017-09-18 |  | Дизайнер 1 [25%]; Дизайнер 2 [25%] | 20h | 2,400 |
| 15 | 2.4 | Завершение разработки дизайна | milestone | 0d | 2017-10-16 | 2017-10-16 |  | 0d |  |  | Дизайнер 1 [25%]; Дизайнер 2 [25%] |  |  |
| 16 | 3 | **Программирование и верстка** |  | 44d | 2017-10-16 | 2017-12-15 |  | 0d |  |  |  | 464h | 58,400 |
| 17 | 3.1 | Верстка шаблонов страниц |  | 32d | 2017-10-16 | 2017-11-29 | 15 | 0d | start no later than 2017-10-17 |  |  |  |  |
| 18 | 3.2 | Программирование |  | 30d | 2017-10-26 | 2017-12-06 | 17SS+7d | 0d |  |  | Верстальщик | 240h | 27,600 |
| 19 | 3.3 | Заполнение страниц и тестирование на реальных данных |  | 14d | 2017-10-20 | 2017-11-08 | 17SS+3d | 8.88d | finish no later than 2017-11-21 |  | Программист 1 [50%]; Программист 2 [50%]; Программист 3 [50%] | 168h | 25,200 |
| 20 | 3.4 | Доработка кода, исправление ошибок |  | 7d | 2017-12-07 | 2017-12-15 | 18 | 0d |  |  | Менеджер | 56h | 5,600 |
| 21 | 3.5 | Завершение программирования и верстки | milestone | 0d | 2017-12-15 | 2017-12-15 | 20 | 0d |  |  | Программист 1 [50%]; Программист 2 [50%]; Программист 3 [50%] |  |  |
| 22 | 4 | **Запуск и сопровождение** |  | 10d | 2017-12-18 | 2017-12-29 |  | 0d |  |  |  | 85.6h | 9,080 |
| 23 | 4.1 | Создание пакета передачи |  | 2d | 2017-12-18 | 2017-12-19 | 21 | 0d |  |  |  |  |  |
| 24 | 4.2 | Подготовка платформы |  | 1d | 2017-12-18 | 2017-12-18 | 23SS | 1d |  |  | Менеджер [30%] | 2.4h | 240 |
| 25 | 4.3 | Заливка контента |  | 1d | 2017-12-20 | 2017-12-20 | 24, 23 | 0d |  |  | Системный администратор [50%] | 4h | 680 |
| 26 | 4.4 | Проверка качества |  | 3d | 2017-12-21 | 2017-12-25 | 25 | 0d |  |  | Системный администратор [50%]; Программист 2 | 36h | 5,640 |
| 27 | 4.5 | Сдача сайта заказчику |  | 1d | 2017-12-26 | 2017-12-26 | 26 | 0d |  |  | Программист 1 [50%]; Программист 3 | 12h | 1,800 |
| 28 | 4.6 | Подготовка группы сопровождения |  | 3d | 2017-12-27 | 2017-12-29 | 27 | 0d |  |  | Руководитель; Менеджер [30%] | 31.2h | 720 |
| 29 | 5 | Закрытие проекта |  | 1d | 2017-12-30 | 2017-12-30 | 28 | 0d | start no earlier than 2017-12-30 | 2017-12-31 | Менеджер [30%]; Программист 1 [50%] | 6.4h | 840 |

| ID | WBS | Task | Type | Duration | Start | Finish | Total slack | Constraint |
| --- | --- | --- | --- | --- | --- | --- | --- | --- |
| 30 | 6 | **Составление отчета руководителю** |  | 85.88d | 2017-08-28 | 2017-12-25 | 0d |  |
| 31 | 6.1 | Составление отчета руководителю 1 | manual | 1d | 2017-08-28 | 2017-08-28 |  | start no earlier than 2017-08-28 |
| 32 | 6.2 | Составление отчета руководителю 2 | manual | 1d | 2017-09-04 | 2017-09-04 |  | start no earlier than 2017-09-04 |
| 33 | 6.3 | Составление отчета руководителю 3 | manual | 1d | 2017-09-11 | 2017-09-11 |  | start no earlier than 2017-09-11 |
| 34 | 6.4 | Составление отчета руководителю 4 | manual | 1d | 2017-09-18 | 2017-09-18 |  | start no earlier than 2017-09-18 |
| 35 | 6.5 | Составление отчета руководителю 5 | manual | 1d | 2017-09-25 | 2017-09-25 |  | start no earlier than 2017-09-25 |
| 36 | 6.6 | Составление отчета руководителю 6 | manual | 1d | 2017-10-02 | 2017-10-02 |  | start no earlier than 2017-10-02 |
| 37 | 6.7 | Составление отчета руководителю 7 | manual | 1d | 2017-10-09 | 2017-10-09 |  | start no earlier than 2017-10-09 |
| 38 | 6.8 | Составление отчета руководителю 8 | manual | 1d | 2017-10-16 | 2017-10-16 |  | start no earlier than 2017-10-16 |
| 39 | 6.9 | Составление отчета руководителю 9 | manual | 1d | 2017-10-23 | 2017-10-23 |  | start no earlier than 2017-10-23 |
| 40 | 6.10 | Составление отчета руководителю 10 | manual | 1d | 2017-10-30 | 2017-10-30 |  | start no earlier than 2017-10-30 |
| 41 | 6.11 | Составление отчета руководителю 11 | manual | 1d | 2017-11-06 | 2017-11-06 |  | start no earlier than 2017-11-06 |
| 42 | 6.12 | Составление отчета руководителю 12 | manual | 1d | 2017-11-13 | 2017-11-13 |  | start no earlier than 2017-11-13 |
| 43 | 6.13 | Составление отчета руководителю 13 | manual | 1d | 2017-11-20 | 2017-11-20 |  | start no earlier than 2017-11-20 |
| 44 | 6.14 | Составление отчета руководителю 14 | manual | 1d | 2017-11-27 | 2017-11-27 |  | start no earlier than 2017-11-27 |
| 45 | 6.15 | Составление отчета руководителю 15 | manual | 1d | 2017-12-04 | 2017-12-04 |  | start no earlier than 2017-12-04 |
| 46 | 6.16 | Составление отчета руководителю 16 | manual | 1d | 2017-12-11 | 2017-12-11 |  | start no earlier than 2017-12-11 |
| 47 | 6.17 | Составление отчета руководителю 17 | manual | 1d | 2017-12-18 | 2017-12-18 |  | start no earlier than 2017-12-18 |
| 48 | 6.18 | Составление отчета руководителю 18 | manual | 1d | 2017-12-25 | 2017-12-25 |  | start no earlier than 2017-12-25 |
