# Курсовая Туровец В Ю

Schedule from MS Project, 2024-11-01 to 2025-05-13, costs in ₽.

## Calendars

- Стандартный: Mon-Sat 09:00-13:00, 14:00-18:00; Sun off. Exceptions (off unless hours are given): 2024-11-04 (День народного единства), 2024-12-31 (Перенесенный выходной день), 2025-01-01 to 2025-01-08 (Новогодние каникулы и Рождество Христово), 2025-03-08 (Международный женский день), 2025-05-01 (Праздник Весны и Труда), 2025-05-08 to 2025-05-09 (День Победы).

## Resources

| Resource | Rate |
| --- | --- |
| Исполнитель (Туровец Владислав Юрьевич) |  |
| Заказчик (владелец предприятия) | 350 |
| Товаровед | 170 |
| Продавец 1 | 150 |
| Продавец 2 | 150 |
| Преподаватель | 200 |
| Веб-хостинг | 6900 |
| Доменное имя | 370 |
| SSL-сертификаты |  |
| Система товароучёта | 20000 |
| Сервисы аналитики (Яндекс.Метрика) |  |
| Платформы для выгрузки товаров (Avito, Farpost, Юла) | 59520 |
| Продвижение сайта в топы поиска через SEO | 18000 |
| Сервисы для индексации по регионам | 5000 |
| Разработчик системы учёта товаров | 350 |
| Лицензия на ККМ сервер | 5300 |
| Кассовое оборудование |  |
| Амортизация на веб-хостинг | 5000 |
| Амортизация на кассовое оборудование | 10000 |
| Амортизация на налоговое обслуживание | 6000 |

## Schedule

| ID | WBS | Task | Type | Duration | Start | Finish | Predecessors | Total slack | Free slack | Constraint | Resources | Work | Cost |
| --- | --- | --- | --- | --- | --- | --- | --- | --- | --- | --- | --- | --- | --- |
| 1 | 1 | **Разработка проекта автоматизации онлайн продаж и учёта товаров для ИП «Туровец» г. Владивосток** |  | 152d | 2024-11-01 | 2025-05-13 |  | 0d |  |  |  | 1253.52h | 228,554 |
| 2 | 1.1 | **Анализ** |  | 15d | 2024-11-01 | 2024-11-19 |  | 0d |  |  |  | 132.4h | 6,060 |
| 3 | 1.1.1 | Сбор данных о предметной области |  | 3d | 2024-11-01 | 2024-11-05 |  | 0d |  | start no earlier than 2024-11-01 | Исполнитель (Туровец Владислав Юрьевич) [50%]; Заказчик (владелец предприятия) [10%] | 14.4h | 840 |
| 4 | 1.1.2 | Определение целей проекта |  | 3d | 2024-11-01 | 2024-11-05 | 3SS | 5d | 0d | start no earlier than 2024-11-01 | Исполнитель (Туровец Владислав Юрьевич) [50%]; Заказчик (владелец предприятия) [5%] | 13.2h | 420 |
| 5 | 1.1.3 | Моделирование бизнес-процессов, включая спецификации и диаграммы деятельности |  | 6d | 2024-11-06 | 2024-11-12 | 3 | 0d |  |  | Исполнитель (Туровец Владислав Юрьевич) [50%]; Заказчик (владелец предприятия) [10%]; Преподаватель [10%] | 33.6h | 2,640 |
| 6 | 1.1.4 | Моделирование бизнес-объектов |  | 3d | 2024-11-13 | 2024-11-15 | 5 | 0d |  |  | Исполнитель (Туровец Владислав Юрьевич); Заказчик (владелец предприятия) [10%]; Преподаватель [10%] | 28.8h | 1,320 |
| 7 | 1.1.5 | Анализ готовых решений |  | 4d | 2024-11-06 | 2024-11-09 | 4, 6FF | 5d |  |  | Исполнитель (Туровец Владислав Юрьевич) [50%] | 16h |  |
| 8 | 1.1.6 | Формирование требований к системе |  | 3d | 2024-11-16 | 2024-11-19 | 6, 7 | 0d |  |  | Исполнитель (Туровец Владислав Юрьевич); Заказчик (владелец предприятия) [10%] | 26.4h | 840 |
| 9 | 1.1.7 | Утверждение требований к системе | milestone | 0d | 2024-11-19 | 2024-11-19 | 8 | 0d |  | start no earlier than 2024-11-09 | Заказчик (владелец предприятия); Исполнитель (Туровец Владислав Юрьевич) |  |  |
| 10 | 1.2 | **Планирование** |  | 14d | 2024-11-20 | 2024-12-05 |  | 0d |  |  |  | 120h | 1,600 |
| 11 | 1.2.1 | Составление ТЗ |  | 3d | 2024-11-20 | 2024-11-22 | 9 | 0d |  |  | Исполнитель (Туровец Владислав Юрьевич) | 24h |  |
| 12 | 1.2.2 | Утверждение ТЗ | milestone | 0d | 2024-11-22 | 2024-11-22 | 11 | 0d |  |  | Заказчик (владелец предприятия); Исполнитель (Туровец Владислав Юрьевич); Преподаватель |  |  |
| 13 | 1.2.3 | Определение этапов проекта |  | 4d | 2024-11-23 | 2024-11-27 | 12 | 0d |  |  | Исполнитель (Туровец Владислав Юрьевич); Преподаватель [10%] | 35.2h | 640 |
| 14 | 1.2.4 | Подготовка концепта сайта |  | 6d | 2024-11-28 | 2024-12-04 | 13 | 0d |  |  | Исполнитель (Туровец Владислав Юрьевич); Преподаватель [10%] | 52.8h | 960 |
| 15 | 1.2.5 | Утверждение концепта сайта | milestone | 0d | 2024-12-04 | 2024-12-04 | 14 | 0d |  |  | Заказчик (владелец предприятия); Исполнитель (Туровец Владислав Юрьевич); Преподаватель |  |  |
| 16 | 1.2.6 | Назначение ролей участников проекта |  | 1d | 2024-12-05 | 2024-12-05 | 15 | 0d |  |  | Исполнитель (Туровец Владислав Юрьевич) | 8h |  |
| 17 | 1.2.7 | Завершение планирования | milestone | 0d | 2024-12-05 | 2024-12-05 | 16 | 0d |  |  | Исполнитель (Туровец Владислав Юрьевич) |  |  |
| 18 | 1.3 | **Проектирование** |  | 27d | 2024-12-06 | 2025-01-15 |  | 0d |  |  |  | 241.76h | 6,496 |
| 19 | 1.3.1 | Составление моделей анализа |  | 6d | 2024-12-06 | 2024-12-12 | 17 | 0d |  |  | Исполнитель (Туровец Владислав Юрьевич); Преподаватель [10%] | 52.8h | 960 |
| 20 | 1.3.2 | Разработка архитектуры интернет-магазина |  | 6d | 2024-12-13 | 2024-12-19 | 19 | 0d |  |  | Исполнитель (Туровец Владислав Юрьевич); Преподаватель [10%] | 52.8h | 960 |
| 21 | 1.3.3 | Определение классов системы |  | 5d | 2024-12-20 | 2024-12-25 | 20 | 0d |  |  | Исполнитель (Туровец Владислав Юрьевич); Преподаватель [10%] | 44h | 800 |
| 22 | 1.3.4 | Определение структуры баз данных |  | 4d | 2024-12-26 | 2024-12-30 | 21 | 0d |  |  | Исполнитель (Туровец Владислав Юрьевич); Разработчик системы учёта товаров [10%]; Преподаватель [10%] | 38.4h | 1,760 |
| 23 | 1.3.5 | Проектирование интерфейса пользователя (UI/UX) |  | 6d | 2025-01-09 | 2025-01-15 | 22 | 0d |  |  | Исполнитель (Туровец Владислав Юрьевич); Заказчик (владелец предприятия) [10%]; Разработчик системы учёта товаров [2%] | 53.76h | 2,016 |
| 24 | 1.3.6 | Утверждение проекта ИС | milestone | 0d | 2025-01-15 | 2025-01-15 | 23 | 0d |  |  | Исполнитель (Туровец Владислав Юрьевич); Заказчик (владелец предприятия) |  |  |

| ID | WBS | Task | Type | Duration | Start | Finish | Predecessors | Total slack | Free slack | Resources | Work | Cost | Риски | План реакции на риски |
| --- | --- | --- | --- | --- | --- | --- | --- | --- | --- | --- | --- | --- | --- | --- |
| 25 | 1.4 | **Программирование и вёрстка интернет-магазина** |  | 50d | 2025-01-16 | 2025-03-17 |  | 0d |  |  | 147.36h | 13,906 |  |  |
| 26 | 1.4.1 | Верстка шаблонов страниц клиентской части сайта |  | 6d | 2025-01-16 | 2025-01-22 | 24 | 0d |  | Исполнитель (Туровец Владислав Юрьевич) [25%]; Разработчик системы учёта товаров [2%] | 12.96h | 336 |  |  |
| 27 | 1.4.2 | Адаптация шаблонов страниц клиентской части сайта под мобильные устройства |  | 3d | 2025-01-20 | 2025-01-22 | 26SS+3d | 0d |  | Исполнитель (Туровец Владислав Юрьевич) [50%] | 12h |  |  |  |
| 28 | 1.4.3 | Интеграция с базой данных системы товароучёта |  | 4d | 2025-01-23 | 2025-01-27 | 27, 26 | 0d |  | Исполнитель (Туровец Владислав Юрьевич) [50%] | 16h |  |  |  |
| 29 | 1.4.4 | **Программирование интернет-магазина** |  | 20d | 2025-01-28 | 2025-02-19 | 28 | 0d |  |  | 40h |  | Большая длительность | Декомпозировать задачу |
| 30 | 1.4.4.1 | Разработка каталога товаров |  | 9d | 2025-01-28 | 2025-02-06 | 28 | 0d |  | Исполнитель (Туровец Владислав Юрьевич) [25%] | 18h |  |  |  |
| 31 | 1.4.4.2 | Раработка функционала поиска |  | 5d | 2025-02-07 | 2025-02-12 | 30 | 0d |  | Исполнитель (Туровец Владислав Юрьевич) [25%] | 10h |  |  |  |
| 32 | 1.4.4.3 | Разработка функционала корзины и оформления заказа |  | 6d | 2025-02-13 | 2025-02-19 | 31 | 0d |  | Исполнитель (Туровец Владислав Юрьевич) [25%] | 12h |  |  |  |
| 33 | 1.4.5 | Настройка хостинга |  | 5d | 2025-02-20 | 2025-02-25 | 29 | 0d |  | Исполнитель (Туровец Владислав Юрьевич) [25%]; Веб-хостинг; Амортизация на веб-хостинг | 10h | 11,900 |  |  |
| 34 | 1.4.6 | Развертывание сайта на хостинге |  | 6d | 2025-02-26 | 2025-03-04 | 33 | 0d |  | Исполнитель (Туровец Владислав Юрьевич) [25%] | 12h |  |  |  |
| 35 | 1.4.7 | Настройка домена |  | 2d | 2025-03-05 | 2025-03-06 | 34 | 1d | 0d | Исполнитель (Туровец Владислав Юрьевич) [25%]; Заказчик (владелец предприятия) [10%]; Доменное имя [300%] | 5.6h | 1,670 |  |  |
| 36 | 1.4.8 | Подключение SLL-сертификатов |  | 2d | 2025-03-07 | 2025-03-11 | 35 | 1d | 0d | Исполнитель (Туровец Владислав Юрьевич) [5%]; SSL-сертификаты [300%] | 0.8h |  |  |  |
| 37 | 1.4.9 | Заполнение страниц и тестирование на реальных данных |  | 5d | 2025-03-10 | 2025-03-15 | 36SS+1d | 1d |  | Исполнитель (Туровец Владислав Юрьевич) [25%] | 10h |  |  |  |
| 38 | 1.4.10 | Доработка кода, исправление ошибок |  | 14d | 2025-02-27 | 2025-03-17 | 34SS+1d, 37FF | 0d |  | Исполнитель (Туровец Владислав Юрьевич) [25%] | 28h |  |  |  |
| 39 | 1.4.11 | Завершение программирования и верстки | milestone | 0d | 2025-03-17 | 2025-03-17 | 38 | 0d |  | Исполнитель (Туровец Владислав Юрьевич) |  |  |  |  |
| 40 | 1.5 | **Настройка системы товароучёта** |  | 64d | 2025-01-16 | 2025-04-02 |  | 24d |  |  | 309.6h | 82,660 |  |  |
| 41 | 1.5.1 | Установка системы товароучёта |  | 4d | 2025-01-16 | 2025-01-20 | 26SS | 39.88d | 0d | Исполнитель (Туровец Владислав Юрьевич) [25%]; Разработчик системы учёта товаров [30%]; Система товароучёта | 17.6h | 23,360 |  |  |
| 42 | 1.5.2 | Настройка KKM-сервера на компьютере |  | 4d | 2025-01-28 | 2025-01-31 | 41SS | 68d | 0d | Исполнитель (Туровец Владислав Юрьевич) [25%]; Лицензия на ККМ сервер; Амортизация на кассовое оборудование; Амортизация на налоговое обслуживание | 8h | 21,300 |  |  |
| 43 | 1.5.3 | Настройка товароучёта, скидок покупателей, зарплат продавцов |  | 6d | 2025-02-01 | 2025-02-07 | 41, 42 | 68d |  | Исполнитель (Туровец Владислав Юрьевич) [25%]; Разработчик системы учёта товаров [30%]; Заказчик (владелец предприятия) [10%] | 31.2h | 6,720 |  |  |
| 44 | 1.5.4 | Интеграция системы учета с интернет-магазином |  | 6d | 2025-03-17 | 2025-03-24 | 39 | 0d |  | Исполнитель (Туровец Владислав Юрьевич) [50%]; Разработчик системы учёта товаров [50%] | 48h | 8,400 |  |  |
| 45 | 1.5.5 | Реализация функционала онлайн-покупок в интернет-магазине (оплата) |  | 8d | 2025-03-24 | 2025-04-02 | 44 | 0d |  | Исполнитель (Туровец Владислав Юрьевич) [50%] | 32h |  |  |  |
| 46 | 1.5.6 | Заполнение системы данными |  | 20d | 2025-01-23 | 2025-02-14 | 41 | 38d |  | Исполнитель (Туровец Владислав Юрьевич) [50%]; Заказчик (владелец предприятия) [20%]; Продавец 1 [15%]; Продавец 2 [15%]; Разработчик системы учёта товаров [8%] | 172.8h | 22,880 |  |  |
| 47 | 1.5.7 | Завершение настройки системы товароучёта | milestone | 0d | 2025-04-02 | 2025-04-02 | 45, 46 | 0d |  | Разработчик системы учёта товаров; Исполнитель (Туровец Владислав Юрьевич) |  |  |  |  |
| 48 | 1.6 | **Разработка дополнительного функционала** |  | 27d | 2025-04-02 | 2025-05-05 |  | 0d |  |  | 148.8h | 96,800 |  |  |
| 49 | 1.6.1 | Настройка SEO-генератора страниц интернет-магазина |  | 6d | 2025-04-02 | 2025-04-09 | 47 | 0d |  | Исполнитель (Туровец Владислав Юрьевич) [50%]; Разработчик системы учёта товаров [30%]; Продвижение сайта в топы поиска через SEO | 38.4h | 23,040 |  |  |
| 50 | 1.6.2 | Настройка SEO-индексации по регионам (ПИГС) |  | 6d | 2025-04-09 | 2025-04-16 | 49 | 0d |  | Исполнитель (Туровец Владислав Юрьевич) [50%]; Разработчик системы учёта товаров [30%]; Сервисы для индексации по регионам | 38.4h | 10,040 |  |  |
| 51 | 1.6.3 | Настройка выгрузок под сторонние платформы (farpost.ru, Авито, Юла) |  | 12d | 2025-04-16 | 2025-04-30 | 50 | 0d |  | Исполнитель (Туровец Владислав Юрьевич) [50%]; Разработчик системы учёта товаров [10%]; Платформы для выгрузки товаров (Avito, Farpost, Юла) | 57.6h | 62,880 |  |  |
| 52 | 1.6.4 | Настройка аналитических инструментов (регистрация Яндекс метрики) |  | 3d | 2025-04-30 | 2025-05-05 | 51 | 0d |  | Исполнитель (Туровец Владислав Юрьевич) [50%]; Разработчик системы учёта товаров [10%]; Сервисы аналитики (Яндекс.Метрика) | 14.4h | 840 |  |  |
| 53 | 1.6.5 | Завершение разработки дополнительного функционала | milestone | 0d | 2025-05-05 | 2025-05-05 | 52 | 0d |  | Разработчик системы учёта товаров; Исполнитель (Туровец Владислав Юрьевич) |  |  |  |  |

| ID | WBS | Task | Type | Duration | Start | Finish | Predecessors | Total slack | Free slack | Constraint | Resources | Work | Cost |
| --- | --- | --- | --- | --- | --- | --- | --- | --- | --- | --- | --- | --- | --- |
| 54 | 1.7 | **Тестирование и отладка** |  | 41d | 2025-03-17 | 2025-05-05 |  | 5d |  |  |  | 78h | 7,000 |
| 55 | 1.7.1 | Тестирование базового функционала |  | 5d | 2025-03-17 | 2025-03-22 | 39 | 36d | 0d |  | Исполнитель (Туровец Владислав Юрьевич) [25%] | 10h |  |
| 56 | 1.7.2 | Проведение функционального тестирования сайта |  | 5d | 2025-03-22 | 2025-03-28 | 55 | 36d |  |  | Исполнитель (Туровец Владислав Юрьевич) [25%]; Заказчик (владелец предприятия) [20%] | 18h | 2,800 |
| 57 | 1.7.3 | Интеграционное тестирование с системой учета |  | 5d | 2025-04-02 | 2025-04-08 | 47 | 26d | 0d | start no earlier than 2025-01-09 | Исполнитель (Туровец Владислав Юрьевич) [25%]; Заказчик (владелец предприятия) [20%]; Разработчик системы учёта товаров [10%] | 22h | 4,200 |
| 58 | 1.7.4 | Устранение ошибок и доработка функционала |  | 14d | 2025-03-24 | 2025-04-09 | 57FF+1d | 26d |  | start no earlier than 2025-01-22 | Исполнитель (Туровец Владислав Юрьевич) [25%] | 28h |  |
| 59 | 1.7.5 | Согласование прототипа с владельцем магазина и окончание тестирования и отладки | milestone | 0d | 2025-05-05 | 2025-05-05 | 53 | 0d |  |  | Заказчик (владелец предприятия); Разработчик системы учёта товаров; Исполнитель (Туровец Владислав Юрьевич) |  |  |
| 60 | 1.8 | **Ввод в эксплуатацию** |  | 8d | 2025-04-30 | 2025-05-13 |  | 0d |  |  |  | 75.6h | 14,032 |
| 61 | 1.8.1 | Разработка пользовательской документации по работе с сайтом |  | 5d | 2025-05-05 | 2025-05-13 | 59 | 0d |  |  | Исполнитель (Туровец Владислав Юрьевич) [25%]; Разработчик системы учёта товаров [20%] | 18h | 2,800 |
| 62 | 1.8.2 | Проведение обучения владельца магазина, продавцов и товароведа по работе с системой |  | 8d | 2025-04-30 | 2025-05-13 | 43, 61FF | 0d |  |  | Исполнитель (Туровец Владислав Юрьевич) [15%]; Заказчик (владелец предприятия) [15%]; Продавец 1 [15%]; Продавец 2 [15%]; Разработчик системы учёта товаров [15%]; Товаровед [15%] | 57.6h | 11,232 |
| 63 | 1.8.3 | Окончательная сдача проекта (согласование с преподавателем и владельцем магазина) | milestone | 0d | 2025-05-13 | 2025-05-13 | 62, 61 | 0d |  |  | Исполнитель (Туровец Владислав Юрьевич); Заказчик (владелец предприятия); Преподаватель |  |  |
