Schedule from MS Project, 2025-01-21 to 2025-10-03, costs in ₽.

## Calendars

- Стандартный: Mon-Fri 09:00-13:00, 14:00-18:00; Sat-Sun off.

## Resources

| Resource | Rate |
| --- | --- |
| Центральный Сервер | 240000 |
| Оборудование POS | 150000 |
| Лицензия 1С:Предприятие 8. ERP Управление предприятием 2 | 581400 |
| Туровец Владислав Юрьевич | 300 |
| Соломоненко Алексей Александрович | 300 |
| Киптилов Никита Сергеевич | 300 |
| Локальный сервер | 120000 |
| Системный администратор | 800 |
| Владелец | 1000 |
| Специалист ПО ИБ | 1500 |
| Персонал | 300 |

## Schedule

| ID | WBS | Task | Type | Duration | Start | Finish | Predecessors | Total slack | Free slack | Resources | Work | Cost |
| --- | --- | --- | --- | --- | --- | --- | --- | --- | --- | --- | --- | --- |
| 1 | 1 | **Внедрение КИС на предприятии "ВАН маркет"** |  | 184d | 2025-01-21 | 2025-10-03 |  | 0d |  |  | 4268.8h | 35,012,840 |
| 2 | 1.1 | **Инициация проекта** |  | 7d | 2025-01-21 | 2025-01-29 |  | 5d |  |  | 168h | 50,400 |
| 3 | 1.1.1 | Определение целей и задач проекта. |  | 1d | 2025-01-21 | 2025-01-21 |  | 5d | 0d | Киптилов Никита Сергеевич; Соломоненко Алексей Александрович; Туровец Владислав Юрьевич | 24h | 7,200 |
| 4 | 1.1.2 | Формирование команды проекта. |  | 1d | 2025-01-22 | 2025-01-22 | 3 | 5d | 0d | Киптилов Никита Сергеевич; Соломоненко Алексей Александрович; Туровец Владислав Юрьевич | 24h | 7,200 |
| 5 | 1.1.3 | Формирование описания предприятия |  | 5d | 2025-01-23 | 2025-01-29 | 4 | 5d | 0d | Киптилов Никита Сергеевич; Соломоненко Алексей Александрович; Туровец Владислав Юрьевич | 120h | 36,000 |
| 6 | 1.1.4 | Согласование | milestone | 0d | 2025-01-29 | 2025-01-29 | 5 | 177d |  | Владелец; Киптилов Никита Сергеевич; Соломоненко Алексей Александрович; Туровец Владислав Юрьевич |  |  |
| 7 | 1.2 | **Планирование проекта** |  | 70d | 2025-01-30 | 2025-05-07 |  | 5d |  |  | 1680h | 504,000 |
| 8 | 1.2.1 | Анализ существующих бизнес-процессов |  | 7d | 2025-01-30 | 2025-02-07 | 5 | 5d | 0d | Киптилов Никита Сергеевич; Соломоненко Алексей Александрович; Туровец Владислав Юрьевич | 168h | 50,400 |
| 9 | 1.2.2 | Построение диаграммы потоков данных |  | 14d | 2025-02-10 | 2025-02-27 | 8 | 5d | 0d | Киптилов Никита Сергеевич; Соломоненко Алексей Александрович; Туровец Владислав Юрьевич | 336h | 100,800 |
| 10 | 1.2.3 | Определение требований к функционалу будущей системы |  | 7d | 2025-02-28 | 2025-03-10 | 9 | 5d | 0d | Киптилов Никита Сергеевич; Соломоненко Алексей Александрович; Туровец Владислав Юрьевич | 168h | 50,400 |
| 11 | 1.2.4 | Составление стратегического плана |  | 7d | 2025-03-11 | 2025-03-19 | 10 | 5d | 0d | Киптилов Никита Сергеевич; Соломоненко Алексей Александрович; Туровец Владислав Юрьевич | 168h | 50,400 |
| 12 | 1.2.5 | Сравнение доступных решений |  | 14d | 2025-03-20 | 2025-04-08 | 11 | 5d | 0d | Киптилов Никита Сергеевич; Соломоненко Алексей Александрович; Туровец Владислав Юрьевич | 336h | 100,800 |
| 13 | 1.2.6 | Построение моделей TO-BE |  | 14d | 2025-04-09 | 2025-04-28 | 12 | 5d | 0d | Киптилов Никита Сергеевич; Соломоненко Алексей Александрович; Туровец Владислав Юрьевич | 336h | 100,800 |
| 14 | 1.2.7 | Составление операционного плана |  | 7d | 2025-04-29 | 2025-05-07 | 13 | 5d | 0d | Киптилов Никита Сергеевич; Соломоненко Алексей Александрович; Туровец Владислав Юрьевич | 168h | 50,400 |
| 15 | 1.2.8 | Согласование проекта | milestone | 0d | 2025-05-07 | 2025-05-07 | 14 | 107d |  | Владелец; Киптилов Никита Сергеевич; Соломоненко Алексей Александрович; Туровец Владислав Юрьевич |  |  |
| 16 | 1.3 | **Выполнение проекта** |  | 96d | 2025-05-08 | 2025-09-18 |  | 0d |  |  | 2244.8h | 34,256,040 |
| 17 | 1.3.1 | Закупка ERP-системы |  | 1d | 2025-05-08 | 2025-05-08 | 14 | 5d | 0d | Лицензия 1С:Предприятие 8. ERP Управление предприятием 2 |  | 581,400 |
| 18 | 1.3.2 | **Настройка подсистемы управления персоналом** |  | 33d | 2025-05-09 | 2025-06-24 | 17 | 5d |  |  | 304h | 130,800 |
| 19 | 1.3.2.1 | Настройка организационной структуры |  | 3d | 2025-05-09 | 2025-05-13 |  | 5d | 0d | Системный администратор [30%]; Соломоненко Алексей Александрович | 31.2h | 12,960 |
| 20 | 1.3.2.2 | Заполнение справочников |  | 2d | 2025-05-14 | 2025-05-15 | 19 | 5d | 0d | Системный администратор [30%]; Соломоненко Алексей Александрович | 20.8h | 8,640 |
| 21 | 1.3.2.3 | Настройка кадрового учета (прием, перевод, увольнение) |  | 7d | 2025-05-16 | 2025-05-26 | 20 | 5d | 0d | Системный администратор [30%]; Соломоненко Алексей Александрович | 72.8h | 30,240 |
| 22 | 1.3.2.4 | Настройка учета рабочего времени |  | 7d | 2025-05-27 | 2025-06-04 | 21 | 5d | 0d | Системный администратор [30%]; Соломоненко Алексей Александрович | 72.8h | 30,240 |
| 23 | 1.3.2.5 | Настройка расчета заработной платы |  | 7d | 2025-06-05 | 2025-06-13 | 22 | 5d | 0d | Системный администратор [30%]; Соломоненко Алексей Александрович | 72.8h | 30,240 |
| 24 | 1.3.2.6 | Тестирование модуля управления персоналом |  | 7d | 2025-06-16 | 2025-06-24 | 23 | 5d |  | Системный администратор [30%]; Персонал [30%] | 33.6h | 18,480 |

| ID | WBS | Task | Duration | Start | Finish | Predecessors | Total slack | Free slack | Constraint | Resources | Work | Cost |
| --- | --- | --- | --- | --- | --- | --- | --- | --- | --- | --- | --- | --- |
| 25 | 1.3.3 | **Настройка подсистемы финансовой деятельности** | 38d | 2025-05-09 | 2025-07-01 |  | 0d |  |  |  | 304h | 130,800 |
| 26 | 1.3.3.1 | Настройка плана счетов | 5d | 2025-05-09 | 2025-05-15 | 17 | 5d | 0d |  | Киптилов Никита Сергеевич; Системный администратор [30%] | 52h | 21,600 |
| 27 | 1.3.3.2 | Заполнение справочников | 2d | 2025-05-16 | 2025-05-19 | 26 | 5d | 0d |  | Киптилов Никита Сергеевич; Системный администратор [30%] | 20.8h | 8,640 |
| 28 | 1.3.3.3 | Настройка учета основных средств | 7d | 2025-05-20 | 2025-05-28 | 27 | 5d | 0d |  | Киптилов Никита Сергеевич; Системный администратор [30%] | 72.8h | 30,240 |
| 29 | 1.3.3.4 | Настройка учета денежных средств | 7d | 2025-05-29 | 2025-06-06 | 28 | 5d | 0d |  | Киптилов Никита Сергеевич; Системный администратор [30%] | 72.8h | 30,240 |
| 30 | 1.3.3.5 | Настройка формирования отчетности | 5d | 2025-06-09 | 2025-06-13 | 29 | 5d |  |  | Киптилов Никита Сергеевич; Системный администратор [30%] | 52h | 21,600 |
| 31 | 1.3.3.6 | Тестирование модуля финансовой деятельности | 7d | 2025-06-23 | 2025-07-01 | 30 | 0d |  | start no earlier than 2025-06-23 | Персонал [30%]; Системный администратор [30%] | 33.6h | 18,480 |
| 32 | 1.3.4 | **Настройка подсистемы коммерческой деятельности** | 26d | 2025-05-09 | 2025-06-13 |  | 12d |  |  |  | 270.4h | 112,320 |
| 33 | 1.3.4.1 | Заполнение справочников | 5d | 2025-05-09 | 2025-05-15 | 17 | 12d | 0d |  | Системный администратор [30%]; Туровец Владислав Юрьевич | 52h | 21,600 |
| 34 | 1.3.4.2 | Настройка управления остатками | 7d | 2025-05-16 | 2025-05-26 | 33 | 12d | 0d |  | Системный администратор [30%]; Туровец Владислав Юрьевич | 72.8h | 30,240 |
| 35 | 1.3.4.3 | Настройка отчетов по продажам | 7d | 2025-05-27 | 2025-06-04 | 34 | 12d | 0d |  | Системный администратор [30%]; Туровец Владислав Юрьевич | 72.8h | 30,240 |
| 36 | 1.3.4.4 | Тестирование модуля коммерческой деятельности | 7d | 2025-06-05 | 2025-06-13 | 35 | 12d |  |  | Системный администратор [30%]; Туровец Владислав Юрьевич | 72.8h | 30,240 |
| 37 | 1.3.5 | **Общие задачи по выполнению проекта** | 57d | 2025-07-02 | 2025-09-18 |  | 0d |  |  |  | 1366.4h | 33,300,720 |
| 38 | 1.3.5.1 | Закупка оборудования | 1d | 2025-07-02 | 2025-07-02 | 36, 24, 31 | 0d |  |  | Локальный сервер [4000%]; Оборудование POS [18500%]; Центральный Сервер |  | 32,790,000 |
| 39 | 1.3.5.2 | Интеграция модулей | 21d | 2025-07-03 | 2025-07-31 | 38 | 0d |  |  | Киптилов Никита Сергеевич; Соломоненко Алексей Александрович; Туровец Владислав Юрьевич; Системный администратор [30%] | 554.4h | 191,520 |
| 40 | 1.3.5.3 | Тестирование системы | 14d | 2025-08-01 | 2025-08-20 | 39 | 0d |  |  | Киптилов Никита Сергеевич; Персонал [30%]; Соломоненко Алексей Александрович; Туровец Владислав Юрьевич | 369.6h | 110,880 |
| 41 | 1.3.5.4 | Миграция данных | 7d | 2025-08-21 | 2025-08-29 | 40 | 0d |  |  | Системный администратор [30%]; Специалист ПО ИБ | 72.8h | 97,440 |
| 42 | 1.3.5.5 | Обучение пользователей | 14d | 2025-09-01 | 2025-09-18 | 41 | 0d |  |  | Киптилов Никита Сергеевич; Персонал [30%]; Соломоненко Алексей Александрович; Туровец Владислав Юрьевич | 369.6h | 110,880 |
| 43 | 1.4 | **Завершение проекта** | 11d | 2025-09-19 | 2025-10-03 |  | 0d |  |  |  | 176h | 202,400 |
| 44 | 1.4.1 | Запуск системы в эксплуатацию | 1d | 2025-09-19 | 2025-09-19 | 42 | 0d |  |  | Системный администратор; Специалист ПО ИБ | 16h | 18,400 |
| 45 | 1.4.2 | Мониторинг и поддержка системы | 10d | 2025-09-22 | 2025-10-03 | 44 | 0d |  |  | Системный администратор; Специалист ПО ИБ | 160h | 184,000 |
